Schedule from MS Project, 2010-05-20 to 2010-10-21, A marks actual dates.

## Calendars

- Standard: Mon-Fri 08:00-12:00, 13:00-17:00; Sat-Sun off. Exceptions (off unless hours are given): 2010-05-31, 2010-07-05, 2010-09-06.

## Resources

| Resource |
| --- |
| Bediako |
| Satish |
| Prasad |
| All |
| Vijay |
| John |
| Greg |
| Dan |
| Santhosh |
| Satisj |
| Sree |
| Satich |
| Santosh |
| Vijat |
| Santhiosh |

## Schedule

| ID | WBS | Task | Type | Duration | Start | Finish | Predecessors | Complete | Remaining | Total slack | Free slack | Constraint | Resources | Work | Actual work | Text1 |
| --- | --- | --- | --- | --- | --- | --- | --- | --- | --- | --- | --- | --- | --- | --- | --- | --- |
| 2 | 1 | **Project management and set-up tasks** |  | 108d | 2010-05-20 A | 2010-10-21 |  | 89% | 12d | 0d |  |  |  | 560h | 552h |  |
| 3 | 1.1 | **Inception** |  | 21d | 2010-05-20 A | 2010-06-18 A |  | 100% |  |  |  |  |  | 168h | 168h |  |
| 4 | 1.1.1 | Project awarded | milestone | 0d | 2010-05-20 A | 2010-05-20 A |  | 100% |  |  |  | start no earlier than 2010-05-20 |  |  |  |  |
| 5 | 1.1.2 | Kickoff meeting |  | 1d | 2010-05-28 A | 2010-05-28 A |  | 100% |  |  |  | start no earlier than 2010-05-28 |  |  |  |  |
| 6 | 1.1.3 | Draft Project Management Plan |  | 10d | 2010-06-07 A | 2010-06-18 A |  | 100% |  |  |  | start no earlier than 2010-06-07 | Greg | 80h | 80h |  |
| 7 | 1.1.4 | **New member ramp-up & SDK training** |  | 6d | 2010-06-07 A | 2010-06-14 A |  | 100% |  |  |  |  |  | 88h | 88h |  |
| 8 | 1.1.4.1 | Self study |  | 5d | 2010-06-07 A | 2010-06-11 A |  | 100% |  |  |  | start no earlier than 2010-06-07 | Bediako; John | 80h | 80h |  |
| 9 | 1.1.4.2 | SDK training class |  | 1d | 2010-06-14 A | 2010-06-14 A |  | 100% |  |  |  | start no earlier than 2010-06-14 | All | 8h | 8h |  |
| 10 | 1.2 | **Elaboration** |  | 17d | 2010-06-21 A | 2010-07-14 A |  | 100% |  |  |  |  |  | 352h | 352h |  |
| 11 | 1.2.1 | Review and deliver Project Management Plan |  | 5d | 2010-06-21 A | 2010-06-25 A |  | 100% |  |  |  | start no earlier than 2010-06-21 | Greg; Satish | 80h | 80h |  |
| 12 | 1.2.2 | Scope document (charter) |  | 12d | 2010-06-21 A | 2010-07-07 A |  | 100% |  |  |  | start no earlier than 2010-06-21 | Greg; Satish | 192h | 192h |  |
| 13 | 1.2.3 | Design Review Package - note: will not be 10 days before C1 |  | 10d | 2010-06-30 A | 2010-07-14 A | 12FF, 59FF, 101FF | 100% |  |  |  |  | All | 80h | 80h |  |
| 14 | 1.3 | **Transition** |  | 5d | 2010-10-01 | 2010-10-07 |  |  |  | 0d |  | start no earlier than 2010-09-27 |  |  |  |  |
| 15 | 1.3.1 | Project Summary Report |  | 5d | 2010-10-01 | 2010-10-07 | 88 |  |  | -1d | 0d | finish no later than 2010-10-07 |  |  |  |  |
| 16 | 1.4 | **Monthly status reports** |  | 86d | 2010-06-10 A | 2010-10-11 |  | 80% | 17.2d | 8d |  |  |  | 40h | 32h |  |
| 17 | 1.4.1 | Monthly status report 1 |  | 1d | 2010-06-10 A | 2010-06-10 A |  | 100% |  |  |  | start no earlier than 2010-06-10 | Satish | 8h | 8h |  |
| 18 | 1.4.2 | Monthly status report 2 |  | 1d | 2010-07-12 A | 2010-07-12 A |  | 100% |  |  |  | start no earlier than 2010-07-10 | Greg | 8h | 8h |  |
| 19 | 1.4.3 | Monthly status report 3 |  | 1d | 2010-08-10 A | 2010-08-10 A |  | 100% |  |  |  | start no earlier than 2010-08-10 | Greg | 8h | 8h |  |
| 20 | 1.4.4 | Monthly status report 4 |  | 1d | 2010-09-10 A | 2010-09-10 A |  | 100% |  |  |  | start no earlier than 2010-09-10 | Greg | 8h | 8h |  |
| 21 | 1.4.5 | Monthly status report 5 |  | 1d | 2010-10-11 | 2010-10-11 |  |  |  | 8d |  | start no earlier than 2010-10-10 | Greg | 8h |  |  |
| 22 | 1.5 | Project Completion | milestone | 0d | 2010-10-21 | 2010-10-21 |  |  |  | 0d |  | must finish on 2010-10-21 |  |  |  |  |
| 24 | 2 | **SDK 4.3 release** |  | 19d | 2010-05-28 A | 2010-06-24 A |  | 100% |  |  |  |  |  | 576h | 576h | 1,2,10 |
| 25 | 2.1 | QA support |  | 6d | 2010-05-28 A | 2010-06-07 A |  | 100% |  |  |  | start no earlier than 2010-05-28 | Santhosh; Vijay [75%] | 96h | 96h |  |
| 26 | 2.2 | Unit testing |  | 6d | 2010-06-02 A | 2010-06-09 A |  | 100% |  |  |  | start no earlier than 2010-06-02 | John [50%]; Vijay [25%] | 96h | 96h |  |

| ID | WBS | Task | Type | Duration | Start | Finish | Predecessors | Complete | Remaining | Total slack | Constraint | Resources | Work | Actual work |
| --- | --- | --- | --- | --- | --- | --- | --- | --- | --- | --- | --- | --- | --- | --- |
| 27 | 2.3 | **Update guides** |  | 5d | 2010-06-01 A | 2010-06-07 A |  | 100% |  |  |  |  | 40h | 40h |
| 28 | 2.3.1 | Workbench Users Guide |  | 1d | 2010-06-01 A | 2010-06-01 A |  | 100% |  |  | start no earlier than 2010-06-01 | Dan | 8h | 8h |
| 29 | 2.3.2 | SDK Programmers Guide |  | 1d | 2010-06-02 A | 2010-06-02 A | 28 | 100% |  |  |  | Dan | 8h | 8h |
| 30 | 2.3.3 | UML Modeling Guide |  | 1d | 2010-06-03 A | 2010-06-03 A | 29 | 100% |  |  |  | Dan | 8h | 8h |
| 31 | 2.3.4 | Object Relational Mapping Guide |  | 1d | 2010-06-04 A | 2010-06-04 A | 30 | 100% |  |  |  | Dan | 8h | 8h |
| 32 | 2.3.5 | How To Use SDK Guide |  | 1d | 2010-06-07 A | 2010-06-07 A | 31 | 100% |  |  |  | Dan | 8h | 8h |
| 33 | 2.4 | **Update documentation** |  | 10d | 2010-06-07 A | 2010-06-18 A |  | 100% |  |  |  |  | 160h | 160h |
| 34 | 2.4.1 | ISO Common Architectural Overview |  | 2d | 2010-06-07 A | 2010-06-08 A |  | 100% |  |  | start no earlier than 2010-06-07 | Prasad; Dan [50%] | 32h | 32h |
| 35 | 2.4.2 | SDK release notes |  | 2d | 2010-06-09 A | 2010-06-10 A | 34 | 100% |  |  |  | Prasad; Dan [50%] | 32h | 32h |
| 36 | 2.4.3 | Workbench release notes |  | 2d | 2010-06-11 A | 2010-06-14 A | 35 | 100% |  |  |  | Prasad; Dan [50%] | 32h | 32h |
| 37 | 2.4.4 | ISO Common release notes |  | 1d | 2010-06-15 A | 2010-06-15 A | 36 | 100% |  |  |  | Prasad; Dan [50%] | 16h | 16h |
| 38 | 2.4.5 | SDK:Example/ISOExample readme |  | 1d | 2010-06-16 A | 2010-06-16 A | 37 | 100% |  |  |  | Prasad; Dan [50%] | 16h | 16h |
| 39 | 2.4.6 | Workbench readme |  | 1d | 2010-06-17 A | 2010-06-17 A | 38 | 100% |  |  |  | Prasad; Dan [50%] | 16h | 16h |
| 40 | 2.4.7 | ISO Common readme |  | 1d | 2010-06-18 A | 2010-06-18 A | 39 | 100% |  |  |  | Prasad; Dan [50%] | 16h | 16h |
| 41 | 2.5 | Release preparation (gforge, download center, etc.) |  | 10d | 2010-06-07 A | 2010-06-18 A |  | 100% |  |  | start no earlier than 2010-06-07 | Dan [50%] | 80h | 80h |
| 42 | 2.6 | Workbench deployment, release packaging, readme |  | 3d | 2010-06-11 A | 2010-06-15 A |  | 100% |  |  | start no earlier than 2010-06-11 | Santhosh | 24h | 24h |
| 43 | 2.7 | User acceptance testing |  | 5d | 2010-06-14 A | 2010-06-18 A |  | 100% |  |  | start no earlier than 2010-06-14 | Satish; Sree | 80h | 80h |
| 44 | 2.8 | Release ready | milestone | 0d | 2010-06-21 A | 2010-06-21 A |  | 100% |  |  | start no earlier than 2010-06-21 |  |  |  |
| 45 | 2.9 | Release announcement | milestone | 0d | 2010-06-22 A | 2010-06-22 A |  | 100% |  |  | start no earlier than 2010-06-22 |  |  |  |
| 46 | 2.10 | Software Code Base (4.3) |  | 1d | 2010-06-24 A | 2010-06-24 A | 44FS+3d | 100% |  |  | start no earlier than 2010-06-15 |  |  |  |
| 47 | 2.11 | Deployment Package (4.3) |  | 1d | 2010-06-24 A | 2010-06-24 A | 44FS+3d | 100% |  |  | start no earlier than 2010-06-15 |  |  |  |
| 49 | 3 | **ISO 21090 Java library 2.2 (embedded in SDK)** |  | 79d | 2010-06-21 A | 2010-10-11 |  | 69% | 24.55d | 8d |  |  | 472h | 386h |
| 50 | 3.1 | **Elaboration** |  | 10d | 2010-06-21 A | 2010-07-02 A |  | 100% |  |  | start no earlier than 2010-06-21 |  | 80h | 80h |
| 51 | 3.1.1 | **E1 - Sprint 1** |  | 10d | 2010-06-21 A | 2010-07-02 A |  | 100% |  |  |  |  | 80h | 80h |
| 52 | 3.1.1.1 | **Requirements and Design Specifications** |  | 10d | 2010-06-21 A | 2010-07-02 A |  | 100% |  |  |  |  | 80h | 80h |
| 53 | 3.1.1.1.1 | GAP_Analysis_Iso21090.doc |  | 4d | 2010-06-21 A | 2010-06-24 A |  | 100% |  |  |  | Vijay | 32h | 32h |
| 54 | 3.1.1.1.2 | Design analysis |  | 6d | 2010-06-25 A | 2010-07-02 A | 53 | 100% |  |  |  | Vijay | 48h | 48h |

| ID | WBS | Task | Type | Duration | Start | Finish | Predecessors | Complete | Remaining | Total slack | Free slack | Constraint | Resources | Work | Actual work |
| --- | --- | --- | --- | --- | --- | --- | --- | --- | --- | --- | --- | --- | --- | --- | --- |
| 55 | 3.2 | **Construction** |  | 58d | 2010-07-06 A | 2010-09-24 |  | 77% | 13.63d | 19d |  |  |  | 384h | 306h |
| 56 | 3.2.1 | **C1- Sprint 2** |  | 19d | 2010-07-06 A | 2010-07-30 |  | 99% | 0d | 58d |  | start no earlier than 2010-07-06 |  | 144h | 144h |
| 57 | 3.2.1.1 | Finalized requirements from PODS/COPPA | milestone | 0d | 2010-07-06 | 2010-07-06 | 54 |  |  | 77d |  |  |  |  |  |
| 58 | 3.2.1.2 | **Requirements and Design Specification (cont.)** |  | 7d | 2010-07-06 A | 2010-07-14 A | 57 | 100% |  |  |  |  |  | 56h | 56h |
| 59 | 3.2.1.2.1 | ISO 21090 Common Library version 2.2 Design.doc |  | 7d | 2010-07-06 A | 2010-07-14 A |  | 100% |  |  |  | start no earlier than 2010-07-06 | Vijay | 56h | 56h |
| 60 | 3.2.1.3 | [Add data types for PODS/COPPA if required] | milestone | 0d | 2010-07-06 A | 2010-07-06 A | 57 | 100% |  |  |  | start no earlier than 2010-06-28 |  |  |  |
| 61 | 3.2.1.4 | Java API expansion implementation -rnd 1 |  | 3d | 2010-07-15 A | 2010-07-19 A | 60, 59 | 100% |  |  |  |  | Vijay | 24h | 24h |
| 62 | 3.2.1.5 | JAXB transformers - rnd 1 |  | 2d | 2010-07-21 A | 2010-07-22 A | 61 | 100% |  |  |  | start no earlier than 2010-07-21 | Vijay | 16h | 16h |
| 63 | 3.2.1.6 | Java API expansion implementation - rnd 2 |  | 2d | 2010-07-23 A | 2010-07-26 A | 62 | 100% |  |  |  | start no earlier than 2010-07-22 |  |  |  |
| 64 | 3.2.1.7 | JAXB transformers - rnd 2 |  | 2d | 2010-07-27 A | 2010-07-28 A | 63 | 100% |  |  |  | start no earlier than 2010-07-22 |  |  |  |
| 65 | 3.2.1.8 | Sprint C1 Integration |  | 2d | 2010-07-29 A | 2010-07-30 A | 64 | 100% |  |  |  |  | Vijay; Santosh; Dan | 48h | 48h |
| 66 | 3.2.2 | **C2 - Sprint 3** |  | 19d | 2010-08-02 A | 2010-08-27 |  | 99% | 0d | 39d |  | start no earlier than 2010-08-02 |  | 48h | 48h |
| 67 | 3.2.2.1 | Junit test cases |  | 1d | 2010-08-02 A | 2010-08-02 A |  | 100% |  |  |  |  | Vijay | 8h | 8h |
| 68 | 3.2.2.2 | 2.1.1 patch library |  | 4d | 2010-08-03 A | 2010-08-06 A |  | 100% |  |  |  | start no earlier than 2010-08-03 | Vijay | 32h | 32h |
| 69 | 3.2.2.3 | Final listing of actual data type support in v 2.2 |  | 1d | 2010-08-23 A | 2010-08-23 A |  | 100% |  |  |  | start no earlier than 2010-08-23 | Dan | 8h | 8h |
| 70 | 3.2.2.4 | Finalized design documents to QA | milestone | 0d | 2010-08-23 A | 2010-08-23 A | 69 | 100% |  |  |  | start no earlier than 2010-08-09 | Dan |  |  |
| 71 | 3.2.2.5 | (Test Plan Due - embedded in SDK) | milestone | 0d | 2010-08-13 | 2010-08-13 |  |  |  | 49d |  | start no earlier than 2010-08-13 |  |  |  |
| 72 | 3.2.2.6 | (Sprint C2 Integration -embedded in SDK) | milestone | 0d | 2010-08-27 | 2010-08-27 |  |  |  | 39d |  | start no earlier than 2010-08-27 |  |  |  |
| 73 | 3.2.3 | **C3 - Sprint 4 (QA)** |  | 19d | 2010-08-30 A | 2010-09-24 |  | 55% | 8.59d | 19d |  | start no earlier than 2010-08-30 |  | 192h | 114h |
| 74 | 3.2.3.1 | Code base available for QA | milestone | 0d | 2010-08-30 A | 2010-08-30 A |  | 100% |  |  |  |  |  |  |  |
| 75 | 3.2.3.2 | QA Support |  | 19d | 2010-08-30 A | 2010-09-24 |  | 75% | 4.75d | -1d | 0d |  | All | 152h | 114h |
| 76 | 3.2.3.3 | PIM_21090.pdf |  | 2d | 2010-09-20 | 2010-09-21 |  |  |  | 22d |  | start no earlier than 2010-09-20 | Vijay | 16h |  |
| 77 | 3.2.3.4 | **Update documentation** |  | 13d | 2010-09-08 A | 2010-09-24 |  |  | 13d | -1d | 0d |  |  | 24h |  |
| 78 | 3.2.3.4.1 | ISO Common Architectural Overview (no changes) | milestone | 0d | 2010-09-08 A | 2010-09-08 A |  | 100% |  |  |  | start no earlier than 2010-09-08 |  |  |  |
| 79 | 3.2.3.4.2 | ISO Common release notes |  | 0.5d | 2010-09-22 | 2010-09-22 |  |  |  | 1.5d |  | start no earlier than 2010-09-22 | Vijay | 4h |  |
| 80 | 3.2.3.4.3 | ISO Common readme |  | 0.5d | 2010-09-22 | 2010-09-22 |  |  |  | 1.5d |  | start no earlier than 2010-09-22 | Vijay | 4h |  |
| 81 | 3.2.3.4.4 | Limitations and known issues |  | 1d | 2010-09-23 | 2010-09-23 |  |  |  | 0d |  | start no earlier than 2010-09-23 | Vijay | 8h |  |
| 82 | 3.2.3.4.5 | Variations between ISO 21090 XSD and UML/pdf |  | 1d | 2010-09-24 | 2010-09-24 |  |  |  | -1d | 0d | start no earlier than 2010-09-24 | Vijay | 8h |  |
| 83 | 3.2.3.5 | Final product documentation to QA | milestone | 0d | 2010-09-20 | 2010-09-20 |  |  |  | 24d |  | start no earlier than 2010-09-20 |  |  |  |
| 84 | 3.2.3.6 | Download Center updates |  | 2d | 2010-09-23 | 2010-09-24 |  |  |  | -1d | 0d | finish no earlier than 2010-09-24 |  |  |  |
| 85 | 3.2.3.7 | QA Complete | milestone | 0d | 2010-09-24 | 2010-09-24 |  |  |  | 20d |  | start no earlier than 2010-09-24 |  |  |  |

| ID | WBS | Task | Type | Duration | Start | Finish | Predecessors | Complete | Remaining | Total slack | Free slack | Constraint | Resources | Work | Actual work | Text1 |
| --- | --- | --- | --- | --- | --- | --- | --- | --- | --- | --- | --- | --- | --- | --- | --- | --- |
| 86 | 3.3 | **Transition** |  | 11d | 2010-09-27 | 2010-10-11 |  |  |  | -1d | 0d |  |  | 8h |  |  |
| 87 | 3.3.1 | Check CI Server (exceptions previously fixed) |  | 1d | 2010-09-27 | 2010-09-27 |  |  |  | 18d |  | start no earlier than 2010-09-27 | Vijay | 8h |  |  |
| 88 | 3.3.2 | User Acceptance Testing |  | 5d | 2010-09-27 | 2010-10-01 | 75, 77, 84 |  |  | -1d | 0d |  |  |  |  |  |
| 89 | 3.3.3 | (Test Package) |  | 1d | 2010-10-04 | 2010-10-04 | 88 |  |  | 8d | 0d |  |  |  |  |  |
| 90 | 3.3.4 | ISO 21090 Java Library 2.2 Release |  | 1d | 2010-10-05 | 2010-10-05 | 89 |  |  | 8d | 0d |  |  |  |  |  |
| 91 | 3.3.5 | Software Code Base (2.2) |  | 1d | 2010-10-11 | 2010-10-11 | 90FS+3d |  |  | 8d |  |  |  |  |  |  |
| 92 | 3.3.6 | Deployment Package (2.2) |  | 1d | 2010-10-11 | 2010-10-11 | 90FS+3d |  |  | 8d |  |  |  |  |  |  |
| 94 | 4 | **SDK 4.4 release (using 2.1 library, integrated with caGrid 1.4)** |  | 79d | 2010-06-21 A | 2010-10-11 |  | 87% | 10.56d | 8d |  |  |  | 1045.33h | 977.73h |  |
| 95 | 4.1 | **Elaboration** |  | 10d | 2010-06-21 A | 2010-07-02 A |  | 100% |  |  |  |  |  | 120h | 120h |  |
| 96 | 4.1.1 | **E1 - Sprint 1** |  | 10d | 2010-06-21 A | 2010-07-02 A |  | 100% |  |  |  |  |  | 120h | 120h |  |
| 97 | 4.1.1.1 | Functional Analysis |  | 5d | 2010-06-21 A | 2010-06-25 A |  | 100% |  |  |  | start no earlier than 2010-06-21 | Dan | 40h | 40h | 1-6,8 |
| 98 | 4.1.1.2 | Requirements and Design Specifications |  | 5d | 2010-06-28 A | 2010-07-02 A | 97 | 100% |  |  |  | start no earlier than 2010-06-15 | Dan; Santhosh | 80h | 80h | 1-6,8 |
| 99 | 4.2 | **Construction** |  | 58d | 2010-07-06 A | 2010-09-24 |  | 94% | 3.42d | 19d |  |  |  | 909.33h | 857.73h |  |
| 100 | 4.2.1 | **C1- Sprint 2** |  | 19d | 2010-07-06 A | 2010-07-30 A |  | 100% |  |  |  | start no earlier than 2010-07-06 |  | 309.33h | 309.33h |  |
| 101 | 4.2.1.1 | **Requirements and Design specifications (cont)** |  | 4d | 2010-07-06 A | 2010-07-09 A |  | 100% |  |  |  |  |  | 72h | 72h |  |
| 102 | 4.2.1.1.1 | SDK_4.4_ISO_Data_Type_Support_within_Web_UI_Design_Document.docx |  | 2d | 2010-07-06 A | 2010-07-07 A | 98 | 100% |  |  |  |  | Dan | 16h | 16h | 5,6,8 |
| 103 | 4.2.1.1.2 | SDK 4.4_ISO_Data_Type_Support.EAP |  | 2d | 2010-07-08 A | 2010-07-09 A | 102 | 100% |  |  |  |  | Dan | 16h | 16h | 1,2 |
| 104 | 4.2.1.1.3 | RESTfulAPI_Design.docx |  | 4d | 2010-07-06 A | 2010-07-09 A | 98 | 100% |  |  |  |  | Santhosh | 32h | 32h |  |
| 105 | 4.2.1.1.4 | Using JAXB with ISO 21090 data types.doc |  | 1d | 2010-07-08 A | 2010-07-08 A |  | 100% |  |  |  | start no earlier than 2010-07-08 | Prasad | 8h | 8h |  |
| 106 | 4.2.1.2 | caGrid code freeze | milestone | 0d | 2010-07-06 A | 2010-07-06 A |  | 100% |  |  |  | start no earlier than 2010-07-06 |  |  |  |  |
| 107 | 4.2.1.3 | Meet with SI regarding metadata repository integration | milestone | 0d | 2010-07-06 A | 2010-07-06 A |  | 100% |  |  |  | start no earlier than 2010-06-28 | Greg; Satish |  |  | 11,12 |
| 108 | 4.2.1.4 | Conversion of RESTful query to ISO object |  | 4d | 2010-07-12 A | 2010-07-15 A | 104 | 100% |  |  |  |  | Santhosh | 32h | 32h | 2,8 |
| 109 | 4.2.1.5 | Meet with caGrid to discuss integration | milestone | 0d | 2010-07-15 A | 2010-07-15 A | 108 | 100% |  |  |  | start no earlier than 2010-07-15 | Greg; Satish |  |  |  |
| 110 | 4.2.1.6 | Query Translator ISO object to HQL Query |  | 4d | 2010-07-16 A | 2010-07-21 A | 109 | 100% |  |  |  |  | Santhosh | 32h | 32h | 2,3 |
| 111 | 4.2.1.7 | JUnit test cases (query/object conversions) |  | 2d | 2010-07-22 A | 2010-07-23 A | 108, 110 | 100% |  |  |  | start no earlier than 2010-07-21 | Santhosh | 16h | 16h | 2,3 |
| 112 | 4.2.1.8 | Class Cache Map for Searchable fields for GUI |  | 3d | 2010-07-26 A | 2010-07-28 A | 111 | 100% |  |  |  |  | Santhosh [22.2%] | 5.33h | 5.33h |  |
| 113 | 4.2.1.9 | Modify / unit test Workbench changes to remove API enabling restrictions |  | 1d | 2010-07-12 A | 2010-07-12 A | 101 | 100% |  |  |  |  | Dan | 8h | 8h | 4,5 |
| 114 | 4.2.1.10 | Modify / unit test build scripts to remove API enabling restrictions |  | 1d | 2010-07-13 A | 2010-07-13 A | 113 | 100% |  |  |  |  | Dan | 8h | 8h | 4,5 |
| 115 | 4.2.1.11 | Support Search Criteria input from HTML for all supported ISO data types |  | 8d | 2010-07-14 A | 2010-07-23 A | 114 | 100% |  |  |  |  | Dan | 64h | 64h | 4,5 |
| 116 | 4.2.1.12 | Integrate metadata to only selectively generate ISO data type input fields that are actually mapped to the database |  | 3d | 2010-07-26 A | 2010-07-28 A | 115, 112SS | 100% |  |  |  |  | Dan | 24h | 24h |  |
| 117 | 4.2.1.13 | Sprint C1 Integration |  | 2d | 2010-07-29 A | 2010-07-30 A | 111, 116 | 100% |  |  |  | start no earlier than 2010-06-15 | Vijay; Santhosh; Dan | 48h | 48h |  |

| ID | WBS | Task | Type | Duration | Start | Finish | Predecessors | Complete | Remaining | Total slack | Constraint | Resources | Work | Actual work | Text1 |
| --- | --- | --- | --- | --- | --- | --- | --- | --- | --- | --- | --- | --- | --- | --- | --- |
| 118 | 4.2.2 | **C2 - Sprint 3** |  | 20d | 2010-08-02 A | 2010-08-27 A |  | 100% |  |  | start no earlier than 2010-08-02 |  | 248h | 248h |  |
| 119 | 4.2.2.1 | XSLT for GETHTML (with unit tests) |  | 5d | 2010-08-02 A | 2010-08-06 A |  | 100% |  |  | start no earlier than 2010-08-02 | Santhosh | 40h | 40h | 2,3 |
| 120 | 4.2.2.2 | XSLT for GETJSON (with unit tests) |  | 5d | 2010-08-09 A | 2010-08-13 A |  | 100% |  |  | start no earlier than 2010-08-09 | Santhosh | 40h | 40h | 2,3 |
| 121 | 4.2.2.3 | JSON HTML script changes for ISO data types |  | 2d | 2010-08-16 A | 2010-08-17 A |  | 100% |  |  | start no earlier than 2010-08-16 | Santhosh | 16h | 16h | 2,3 |
| 122 | 4.2.2.4 | Integrate submitted ISO data type criteria with existing search functionality |  | 2d | 2010-08-02 A | 2010-08-03 A | 116 | 100% |  |  | start no earlier than 2010-07-21 | Dan | 16h | 16h | 2,3,4,5 |
| 123 | 4.2.2.5 | Implement and unit test client-side form validation |  | 3d | 2010-08-04 A | 2010-08-06 A |  | 100% |  |  | start no earlier than 2010-08-04 | Dan | 24h | 24h | 2,3 |
| 124 | 4.2.2.6 | Integration of v2.2 library (and bkwd comp w/ 2.1.1) |  | 5d | 2010-08-09 A | 2010-08-13 A |  | 100% |  |  | start no earlier than 2010-08-09 | Dan | 40h | 40h |  |
| 125 | 4.2.2.7 | Bug fixes |  | 3d | 2010-08-16 A | 2010-08-18 A |  | 100% |  |  |  | Dan | 16h | 16h |  |
| 126 | 4.2.2.8 | Test Plan - JUnit test cases and updated documentation to QA |  | 2d | 2010-08-19 A | 2010-08-20 A | 132FF-3d | 100% |  |  | start no earlier than 2010-08-19 | Dan | 16h | 16h |  |
| 127 | 4.2.2.9 | Tab order issue |  | 1d | 2010-08-24 A | 2010-08-24 A |  | 100% |  |  | start no earlier than 2010-08-24 | Dan | 8h | 8h |  |
| 128 | 4.2.2.10 | caGrid integration - test SDK compatibility with caGrid 1.4 |  | 2d | 2010-08-25 A | 2010-08-26 A | 109 | 100% |  |  | start no earlier than 2010-08-25 | Dan | 16h | 16h |  |
| 129 | 4.2.2.11 | - not feasible - CQL 2.0 - attempt to reuse w/o caGrid 1.4 changes or conflicts | milestone | 0d | 2010-08-19 A | 2010-08-19 A |  | 100% |  |  | start no earlier than 2010-08-19 |  |  |  |  |
| 130 | 4.2.2.12 | - not feasible - CQL 2.0 - integration with SDK | milestone | 0d | 2010-08-19 A | 2010-08-19 A | 129 | 100% |  |  |  |  |  |  |  |
| 131 | 4.2.2.13 | Finalized design documents to QA | milestone | 0d | 2010-08-09 A | 2010-08-09 A |  | 100% |  |  | start no earlier than 2010-08-09 |  |  |  |  |
| 132 | 4.2.2.14 | Test Plan Due | milestone | 0d | 2010-08-13 A | 2010-08-13 A |  | 100% |  |  | start no earlier than 2010-08-13 |  |  |  |  |
| 133 | 4.2.2.15 | Sprint C2 Integration |  | 1d | 2010-08-27 A | 2010-08-27 A |  | 100% |  |  | start no earlier than 2010-08-27 | Santhosh; Dan | 16h | 16h |  |
| 134 | 4.2.3 | **C3 - Sprint 4 (QA)** |  | 19d | 2010-08-30 A | 2010-09-24 |  | 84% | 2.95d | 19d | start no earlier than 2010-08-30 |  | 352h | 300.4h |  |
| 135 | 4.2.3.1 | Code base available for QA | milestone | 0d | 2010-08-30 A | 2010-08-30 A |  | 100% |  |  | start no earlier than 2010-06-23 |  |  |  |  |
| 136 | 4.2.3.2 | QA Support |  | 19d | 2010-08-30 A | 2010-09-24 |  | 75% | 4.75d | 19d | start no earlier than 2010-06-15 | All | 152h | 114h | 1-6,8 |
| 137 | 4.2.3.3 | Additional system testing |  | 5d | 2010-08-30 A | 2010-09-03 A |  | 100% |  |  |  | Santhosh | 40h | 40h |  |
| 138 | 4.2.3.4 | Known issues from 4.3 - review |  | 0.5d | 2010-09-08 A | 2010-09-08 A | 173 | 100% |  |  | start no earlier than 2010-09-08 | Satish; Greg | 8h | 8h | 10 |
| 139 | 4.2.3.5 | WebSSO knowledge transfer |  | 2d | 2010-09-09 A | 2010-09-10 A |  | 100% |  |  | start no earlier than 2010-09-09 | Vijay; Santhosh | 32h | 32h |  |
| 140 | 4.2.3.6 | **Update documentation** |  | 6d | 2010-09-01 A | 2010-09-10 A |  | 100% |  |  |  |  | 32h | 32h |  |
| 141 | 4.2.3.6.1 | caCORE SDK 4.4 Release Notes (wiki) |  | 2d | 2010-09-01 A | 2010-09-02 A |  | 100% |  |  | start no earlier than 2010-09-01 | Santhosh | 16h | 16h | 2,8 |
| 142 | 4.2.3.6.2 | caCORE Workbench 0.2 Release Notes (wiki) |  | 2d | 2010-09-03 A | 2010-09-07 A |  | 100% |  |  | start no earlier than 2010-09-03 | Santhosh | 16h | 16h | 2,8 |
| 143 | 4.2.3.6.3 | SDK:Example/ISOExample readme (no changes) | milestone | 0d | 2010-09-09 A | 2010-09-09 A |  | 100% |  |  | start no earlier than 2010-09-09 |  |  |  | 1,2,8 |
| 144 | 4.2.3.6.4 | Workbench readme (no changes) | milestone | 0d | 2010-09-10 A | 2010-09-10 A |  | 100% |  |  | start no earlier than 2010-09-10 |  |  |  | 4,5 |

| ID | WBS | Task | Type | Duration | Start | Finish | Predecessors | Complete | Remaining | Total slack | Free slack | Constraint | Resources | Work | Actual work | Text1 |
| --- | --- | --- | --- | --- | --- | --- | --- | --- | --- | --- | --- | --- | --- | --- | --- | --- |
| 145 | 4.2.3.7 | **Update guides** |  | 16d | 2010-08-30 A | 2010-09-22 |  | 83% | 2.67d | 22d |  |  |  | 72h | 60h |  |
| 146 | 4.2.3.7.1 | caCORE Workbench Version 0.2 Guide (wiki) |  | 3d | 2010-08-30 A | 2010-09-01 A |  | 100% |  |  |  | start no earlier than 2010-06-21 | Dan | 24h | 24h | 2,4,5,8 |
| 147 | 4.2.3.7.2 | caCORE SDK Programmers Guide for 4.4 (wiki) |  | 3d | 2010-09-02 A | 2010-09-07 |  | 50% | 1.5d | 32d |  | start no earlier than 2010-09-02 | Dan | 24h | 12h | 2,4,5,8 |
| 148 | 4.2.3.7.3 | UML Modeling Guide (no changes) | milestone | 0d | 2010-09-08 A | 2010-09-08 A |  | 100% |  |  |  | start no earlier than 2010-09-08 |  |  |  | 2,4,5,8 |
| 149 | 4.2.3.7.4 | caCORE SDK Version 4.4 Object Relational Mapping (wiki) |  | 3d | 2010-09-13 A | 2010-09-15 A |  | 100% |  |  |  | start no earlier than 2010-09-13 | Dan | 24h | 24h | 2,4,5,8 |
| 150 | 4.2.3.7.5 | How To Use SDK Guide (no changes) | milestone | 0d | 2010-09-16 A | 2010-09-16 A |  | 100% |  |  |  | start no earlier than 2010-09-16 |  |  |  | 2,4,5,8 |
| 151 | 4.2.3.7.6 | Modifying HBM files for ISO 21090 and the writable API - in programmers guide | milestone | 0d | 2010-09-20 | 2010-09-20 |  |  |  | 24d |  | start no earlier than 2010-09-20 |  |  |  | 14 |
| 152 | 4.2.3.7.7 | Configuring query filters in db for security - in programmers guide | milestone | 0d | 2010-09-22 | 2010-09-22 |  |  |  | 22d |  | start no earlier than 2010-09-22 |  |  |  | 13 |
| 153 | 4.2.3.8 | Metada repository integration (MMS) -not applicable | milestone | 0d | 2010-09-16 A | 2010-09-16 A | 107 | 100% |  |  |  | start no earlier than 2010-09-16 |  |  |  | 11,12 |
| 154 | 4.2.3.9 | Final product documentation to QA | milestone | 0d | 2010-09-20 | 2010-09-20 |  |  |  | 24d |  | start no earlier than 2010-09-20 |  |  |  |  |
| 155 | 4.2.3.10 | Download Center updates |  | 2d | 2010-09-23 A | 2010-09-24 |  | 90% | 0.2d | 19d |  | finish no earlier than 2010-09-24 | Dan | 16h | 14.4h | 1-6,8 |
| 156 | 4.2.3.11 | QA Complete | milestone | 0d | 2010-09-24 | 2010-09-24 |  |  |  | 20d |  | start no earlier than 2010-09-24 |  |  |  |  |
| 157 | 4.3 | **Transition** |  | 11d | 2010-09-27 | 2010-10-11 |  |  |  | 8d |  |  |  | 16h |  |  |
| 158 | 4.3.1 | Spreadsheet of license requirements |  | 2d | 2010-09-28 | 2010-09-29 |  |  |  | 16d |  | start no earlier than 2010-09-28 | Vijay | 16h |  |  |
| 159 | 4.3.2 | User Acceptance Testing |  | 5d | 2010-09-27 | 2010-10-01 |  |  |  | 14d |  | start no earlier than 2010-09-27 |  |  |  |  |
| 160 | 4.3.3 | (Test Package) |  | 1d | 2010-10-04 | 2010-10-04 |  |  |  | 13d |  | start no earlier than 2010-10-04 |  |  |  |  |
| 161 | 4.3.4 | SDK 4.4 Release |  | 1d | 2010-10-05 | 2010-10-05 |  |  |  | 8d | 0d | start no earlier than 2010-10-05 |  |  |  |  |
| 162 | 4.3.5 | Software Code Base (4.4) |  | 1d | 2010-10-11 | 2010-10-11 | 161FS+3d |  |  | 8d |  | start no earlier than 2010-06-15 |  |  |  |  |
| 163 | 4.3.6 | Deployment Package (4.4) |  | 1d | 2010-10-11 | 2010-10-11 | 161FS+3d |  |  | 8d |  | start no earlier than 2010-06-15 |  |  |  |  |
| 165 | 5 | **Tool enhancement prototypes** |  | 74d | 2010-06-21 A | 2010-10-04 |  | 85% | 11.45d | 13d |  |  |  | 1584h | 1328h | 8,9 |
| 166 | 5.1 | **Elaboration** |  | 10d | 2010-06-21 A | 2010-07-02 A |  | 100% |  |  |  |  |  | 280h | 280h |  |
| 167 | 5.1.1 | **E1 - Sprint 1** |  | 10d | 2010-06-21 A | 2010-07-02 A |  | 100% |  |  |  |  |  | 280h | 280h |  |
| 168 | 5.1.1.1 | Top-down analysis paper - research and rough cut |  | 10d | 2010-06-21 A | 2010-07-02 A |  | 100% |  |  |  | start no earlier than 2010-06-21 | Satish [25%]; Prasad | 100h | 100h |  |
| 169 | 5.1.1.2 | Bottom-up analysis paper - research and rough cut |  | 10d | 2010-06-21 A | 2010-07-02 A |  | 100% |  |  |  | start no earlier than 2010-06-21 | Bediako; Satish [25%] | 100h | 100h |  |
| 170 | 5.1.1.3 | Eclipse service creation wizard research |  | 10d | 2010-06-21 A | 2010-07-02 A |  | 100% |  |  |  | start no earlier than 2010-06-21 | John | 80h | 80h |  |

| ID | WBS | Task | Type | Duration | Start | Finish | Predecessors | Complete | Remaining | Total slack | Constraint | Resources | Work | Actual work |
| --- | --- | --- | --- | --- | --- | --- | --- | --- | --- | --- | --- | --- | --- | --- |
| 171 | 5.2 | **Construction** |  | 58d | 2010-07-06 A | 2010-09-24 |  | 88% | 7.04d | 19d |  |  | 1184h | 1048h |
| 172 | 5.2.1 | **C1- Sprint 2** |  | 19d | 2010-07-06 A | 2010-07-30 |  | 89% | 2.05d | 58d | start no earlier than 2010-07-06 |  | 520h | 464h |
| 173 | 5.2.1.1 | **Top-down analysis paper** |  | 19d | 2010-07-06 A | 2010-07-30 | 168 | 84% | 3d | 58d |  |  | 152h | 128h |
| 174 | 5.2.1.1.1 | Updates, reviews and refinements |  | 16d | 2010-07-06 A | 2010-07-27 A |  | 100% |  |  |  | Prasad | 128h | 128h |
| 175 | 5.2.1.1.2 | Next Generation caCORE Infrastructure (document) | milestone | 0d | 2010-07-27 A | 2010-07-27 A | 174 | 100% |  |  |  | Prasad |  |  |
| 176 | 5.2.1.1.3 | caCORE Infrastructure - Next Generation Tooling (presentation) | milestone | 0d | 2010-07-27 A | 2010-07-27 A | 174 | 100% |  |  |  | Prasad |  |  |
| 177 | 5.2.1.1.4 | Design document |  | 3d | 2010-07-28 | 2010-07-30 | 174 |  |  | 58d | start no earlier than 2010-07-22 | Prasad | 24h |  |
| 178 | 5.2.1.2 | **Bottom-up analysis paper** |  | 19d | 2010-07-06 A | 2010-07-30 A | 169 | 100% |  |  |  |  | 152h | 152h |
| 179 | 5.2.1.2.1 | Updates, reviews and refinements |  | 14d | 2010-07-06 A | 2010-07-23 A |  | 100% |  |  |  | Bediako | 112h | 112h |
| 180 | 5.2.1.2.2 | Next Generation SDK (document) | milestone | 0d | 2010-07-23 A | 2010-07-23 A | 179 | 100% |  |  | start no earlier than 2010-07-21 | Bediako |  |  |
| 181 | 5.2.1.2.3 | Future SDK - Technical Treatment (presentation) | milestone | 0d | 2010-07-23 A | 2010-07-23 A | 179 | 100% |  |  | start no earlier than 2010-07-21 | Bediako |  |  |
| 182 | 5.2.1.2.4 | Design document |  | 5d | 2010-07-26 A | 2010-07-30 A | 179 | 100% |  |  | start no earlier than 2010-07-22 | Bediako | 40h | 40h |
| 183 | 5.2.1.3 | **Develop enhancement/protoype plan** |  | 8d | 2010-07-21 A | 2010-07-30 |  | 50% | 4d | 58d |  |  | 64h | 32h |
| 184 | 5.2.1.3.1 | Develop work plan for enhancements |  | 4d | 2010-07-21 A | 2010-07-26 A |  | 100% |  |  | start no earlier than 2010-07-21 | Satish | 32h | 32h |
| 185 | 5.2.1.3.2 | Create workflows |  | 4d | 2010-07-27 | 2010-07-30 | 184 |  |  | 58d | start no earlier than 2010-07-21 | Satish | 32h |  |
| 186 | 5.2.1.4 | **Eclipse integration** |  | 19d | 2010-07-06 A | 2010-07-30 A |  | 100% |  |  |  |  | 152h | 152h |
| 187 | 5.2.1.4.1 | Initial research |  | 2d | 2010-07-06 A | 2010-07-07 A | 170 | 100% |  |  | start no earlier than 2010-06-21 | John | 16h | 16h |
| 188 | 5.2.1.4.2 | Project creation wizard - simplistic multi-page with progress |  | 5d | 2010-07-08 A | 2010-07-14 A | 187 | 100% |  |  |  | John | 40h | 40h |
| 189 | 5.2.1.4.3 | Project creation wizard - listeners, button start, minor additions |  | 2d | 2010-07-15 A | 2010-07-16 A | 188 | 100% |  |  |  | John | 16h | 16h |
| 190 | 5.2.1.4.4 | Eclipse EMF research |  | 5d | 2010-07-19 A | 2010-07-23 A |  | 100% |  |  | start no earlier than 2010-07-19 | John | 40h | 40h |
| 191 | 5.2.1.4.5 | Convert EMF models to EA |  | 5d | 2010-07-26 A | 2010-07-30 A | 190 | 100% |  |  |  | John | 40h | 40h |
| 192 | 5.2.2 | **C2 - Sprint 3** |  | 20d | 2010-08-02 A | 2010-08-27 |  | 99% | 0d | 38d | start no earlier than 2010-08-02 |  | 448h | 448h |
| 193 | 5.2.2.1 | **Design** |  | 15d | 2010-08-02 A | 2010-08-20 A |  | 100% |  |  |  |  | 264h | 264h |
| 194 | 5.2.2.1.1 | SDKGeneratorDesign.pdf |  | 5d | 2010-08-02 A | 2010-08-06 A |  | 100% |  |  |  | Bediako | 40h | 40h |
| 195 | 5.2.2.1.2 | ServiceGenerationFramework_SRS.doc |  | 2d | 2010-08-02 A | 2010-08-03 A |  | 100% |  |  |  | Prasad | 8h | 8h |
| 196 | 5.2.2.1.3 | Next Generation Service Development Framework.docx |  | 3d | 2010-08-04 A | 2010-08-06 A | 195 | 100% |  |  |  | Prasad | 24h | 24h |
| 197 | 5.2.2.1.4 | Eclipse-EA integration testing |  | 5d | 2010-08-02 A | 2010-08-06 A | 196 | 100% |  |  |  | John | 40h | 40h |
| 198 | 5.2.2.1.5 | Detailed design of Eclipse Application, Model Explorer, and Generator Manager |  | 5d | 2010-08-09 A | 2010-08-13 A | 194, 197 | 100% |  |  |  | Bediako; Prasad; John | 120h | 120h |
| 199 | 5.2.2.1.6 | SDKEclipsePluginDesign.pdf |  | 4d | 2010-08-17 A | 2010-08-20 A | 198, 205 | 100% |  |  |  | Bediako | 32h | 32h |
| 200 | 5.2.2.2 | Sub-project setup: repository, tasking, etc. | milestone | 0d | 2010-08-20 | 2010-08-20 |  |  |  | 44d | start no earlier than 2010-08-20 | Bediako |  |  |

| ID | WBS | Task | Duration | Start | Finish | Predecessors | Complete | Remaining | Total slack | Constraint | Resources | Work | Actual work |
| --- | --- | --- | --- | --- | --- | --- | --- | --- | --- | --- | --- | --- | --- |
| 201 | 5.2.2.3 | **Model Explorer and Translators** | 9d | 2010-08-16 A | 2010-08-26 A |  | 100% |  |  |  |  | 80h | 80h |
| 202 | 5.2.2.3.1 | - abandoned - Build Ecore to EA (XMI) translator | 3d | 2010-08-16 A | 2010-08-18 A | 198 | 100% |  |  | start no earlier than 2010-08-13 | John | 24h | 24h |
| 203 | 5.2.2.3.2 | Build EA (XMI) to Ecore translator | 7d | 2010-08-18 A | 2010-08-26 A | 198 | 100% |  |  | start no earlier than 2010-08-18 | John | 56h | 56h |
| 204 | 5.2.2.4 | **Generator** | 9d | 2010-08-16 A | 2010-08-26 A |  | 100% |  |  |  |  | 88h | 88h |
| 205 | 5.2.2.4.1 | Design SDK Generator | 1d | 2010-08-16 A | 2010-08-16 A |  | 100% |  |  |  | Bediako | 8h | 8h |
| 206 | 5.2.2.4.2 | **Build SDK Generator Framework** | 4d | 2010-08-23 A | 2010-08-26 A |  | 100% |  |  |  |  | 32h | 32h |
| 207 | 5.2.2.4.2.1 | Build script executor | 2d | 2010-08-23 A | 2010-08-24 A | 205 | 100% |  |  | start no earlier than 2010-08-23 | Bediako | 16h | 16h |
| 208 | 5.2.2.4.2.2 | Build script context | 2d | 2010-08-25 A | 2010-08-26 A | 205 | 100% |  |  | start no earlier than 2010-08-25 | Bediako | 16h | 16h |
| 209 | 5.2.2.4.3 | **Sample/Reference Implementation** | 6d | 2010-08-17 A | 2010-08-24 A |  | 100% |  |  |  |  | 48h | 48h |
| 210 | 5.2.2.4.3.1 | Design Sample/Reference Implementation | 2d | 2010-08-17 A | 2010-08-18 A | 205 | 100% |  |  |  | Prasad | 16h | 16h |
| 211 | 5.2.2.4.3.2 | Create service implementation templates | 1d | 2010-08-19 A | 2010-08-19 A | 210 | 100% |  |  |  | Prasad | 8h | 8h |
| 212 | 5.2.2.4.3.3 | Create service interface templates | 1d | 2010-08-20 A | 2010-08-20 A | 210 | 100% |  |  | start no earlier than 2010-08-20 | Prasad | 8h | 8h |
| 213 | 5.2.2.4.3.4 | Create Pojo Generator | 1d | 2010-08-23 A | 2010-08-23 A | 210 | 100% |  |  | start no earlier than 2010-08-23 | Prasad | 8h | 8h |
| 214 | 5.2.2.4.3.5 | Create Deployment/Build Scripts | 1d | 2010-08-24 A | 2010-08-24 A | 210 | 100% |  |  | start no earlier than 2010-08-24 | Prasad | 8h | 8h |
| 215 | 5.2.2.5 | Sprint integration | 1d | 2010-08-27 A | 2010-08-27 A | 201, 204 | 100% |  |  |  | Bediako; John | 16h | 16h |
| 216 | 5.2.3 | **C3 - Sprint 4** | 19d | 2010-08-30 A | 2010-09-24 |  | 66% | 6.55d | 19d | start no earlier than 2010-08-30 |  | 216h | 136h |
| 217 | 5.2.3.1 | **Model Explorer and Translators** | 19d | 2010-08-30 A | 2010-09-24 |  | 47% | 10d | 19d |  |  | 120h | 40h |
| 218 | 5.2.3.1.1 | Core Model Explorer Design | 4d | 2010-08-30 A | 2010-09-02 A | 198 | 100% |  |  |  |  |  |  |
| 219 | 5.2.3.1.2 | Build Meaning Model Explorer - main screen | 5d | 2010-09-03 A | 2010-09-10 A | 218 | 100% |  |  |  | John | 40h | 40h |
| 220 | 5.2.3.1.3 | Meaning Model - properties, operations, relationships | 5d | 2010-09-20 | 2010-09-24 |  |  |  | 19d | start no earlier than 2010-09-20 | Bediako | 40h |  |
| 221 | 5.2.3.1.4 | Generator Manager Screen | 5d | 2010-09-20 | 2010-09-24 | 218 |  |  | 19d | start no earlier than 2010-09-20 | John | 40h |  |
| 222 | 5.2.3.2 | **Generator** | 4d | 2010-08-30 A | 2010-09-02 A |  | 100% |  |  |  |  | 32h | 32h |
| 223 | 5.2.3.2.1 | **Build SDK Generator Framework** | 4d | 2010-08-30 A | 2010-09-02 A |  | 100% |  |  |  |  | 32h | 32h |
| 224 | 5.2.3.2.1.1 | Build generator workflow logic | 2d | 2010-08-30 A | 2010-08-31 A | 205 | 100% |  |  | start no earlier than 2010-08-30 | Bediako | 16h | 16h |
| 225 | 5.2.3.2.1.2 | Build core generator | 2d | 2010-09-01 A | 2010-09-02 A | 205 | 100% |  |  | start no earlier than 2010-09-01 | Bediako | 16h | 16h |

| ID | WBS | Task | Type | Duration | Start | Finish | Complete | Total slack | Constraint | Resources | Work | Actual work | Text1 |
| --- | --- | --- | --- | --- | --- | --- | --- | --- | --- | --- | --- | --- | --- |
| 226 | 5.2.3.3 | **Infrastructure** |  | 10d | 2010-09-03 A | 2010-09-17 A | 100% |  |  |  | 64h | 64h |  |
| 227 | 5.2.3.3.1 | Logging |  | 1d | 2010-09-03 A | 2010-09-03 A | 100% |  | start no earlier than 2010-09-03 | Bediako | 8h | 8h |  |
| 228 | 5.2.3.3.2 | Package handling utilities |  | 1d | 2010-09-07 A | 2010-09-07 A | 100% |  | start no earlier than 2010-09-06 | Bediako | 8h | 8h |  |
| 229 | 5.2.3.3.3 | Study Eclipse IDE and existing UI code |  | 2d | 2010-09-08 A | 2010-09-09 A | 100% |  | start no earlier than 2010-09-08 | Bediako | 16h | 16h |  |
| 230 | 5.2.3.3.4 | Integration |  | 2d | 2010-09-16 A | 2010-09-17 A | 100% |  | start no earlier than 2010-09-16 | Bediako; John | 32h | 32h |  |
| 231 | 5.3 | **Transition** |  | 6d | 2010-09-27 | 2010-10-04 |  | 13d | start no earlier than 2010-09-27 |  | 120h |  |  |
| 232 | 5.3.1 | Model Converter Screen |  | 2d | 2010-09-27 | 2010-09-28 |  | 17d |  | Bediako; John | 32h |  |  |
| 233 | 5.3.2 | Test, debug, and demo preparation |  | 3d | 2010-09-29 | 2010-10-01 |  | 14d | start no earlier than 2010-09-29 | Bediako; John | 48h |  |  |
| 234 | 5.3.3 | Refactor requirements and design documentation |  | 5d | 2010-09-27 | 2010-10-01 |  | 14d |  | Satish | 40h |  |  |
| 235 | 5.3.4 | Demo |  | 1d | 2010-10-04 | 2010-10-04 |  | 13d | start no earlier than 2010-10-04 |  |  |  |  |
| 237 | 6 | User support - ongoing |  | 93d | 2010-05-28 | 2010-10-08 |  | 9d | start no earlier than 2010-05-28 | All | 744h |  | 1,10 |
| 238 | 7 | Training development support |  | 10d? | 2010-08-16 | 2010-08-27 |  | 38d | start no earlier than 2010-08-16 | Satish | 80h |  | 10 |
| 240 | 8 | **Major events affecting availability** |  | 75d | 2010-06-01 | 2010-09-15 |  | 26d |  |  | 152h |  |  |
| 241 | 8.1 | VCDE-Architecture Face To Face & Prep |  | 4d | 2010-06-01 | 2010-06-04 |  | 97d | start no earlier than 2010-06-01 | Bediako; Satish; Prasad; Vijay | 128h |  |  |
| 242 | 8.2 | caBIG Annual Meeting prep |  | 3d | 2010-09-07 | 2010-09-09 |  | 30d | start no earlier than 2010-09-07 |  |  |  |  |
| 243 | 8.3 | caBIG Annual Meeting |  | 3d | 2010-09-13 | 2010-09-15 |  | 26d | start no earlier than 2010-09-13 | All | 24h |  |  |
| 245 | 9 | **Vacation** |  | 29d | 2010-07-20 | 2010-08-27 |  | 19d |  |  | 80h |  |  |
| 246 | 9.1 | Greg |  | 1d | 2010-07-20 | 2010-07-20 |  | 66d | start no earlier than 2010-07-20 |  |  |  |  |
| 247 | 9.2 | Greg |  | 5d | 2010-08-09 | 2010-08-13 |  | 48d | start no earlier than 2010-08-09 |  |  |  |  |
| 248 | 9.3 | Vijay |  | 10d | 2010-08-16 | 2010-08-27 |  | 0d | must start on 2010-08-16 | Vijay | 80h |  |  |
| 250 | 10 | Contract deliverables are in blue | milestone | 0d | 2010-05-20 | 2010-05-20 |  | 108d |  |  |  |  |  |
| 251 | 11 | Non-contract deliverables are in maroon | milestone | 0d | 2010-07-13 | 2010-07-13 |  | 72d | start no earlier than 2010-07-13 |  |  |  |  |
| 252 | 12 | Key dates/tasks for interactions with external teams are in green | milestone | 0d | 2010-06-23 | 2010-06-23 |  | 85d | start no earlier than 2010-06-23 |  |  |  |  |
| 255 | 13 | **Reference to objectives** |  | 1d? | 2010-05-20 | 2010-05-20 |  | 107d |  |  |  |  |  |
| 256 | 13.1 | 1) Maintenance of and technical support for the ISO 21090 Java Library |  | 1d? | 2010-05-20 | 2010-05-20 |  | 107d | start no earlier than 2010-05-20 |  |  |  |  |
| 257 | 13.2 | 2) caCORE SDK support for new data types |  | 1d? | 2010-05-20 | 2010-05-20 |  | 107d | start no earlier than 2010-05-20 |  |  |  |  |
| 258 | 13.3 | 3) Provide querying of new data types via Java API, remote API, RESTful API, and caGrid service |  | 1d? | 2010-05-20 | 2010-05-20 |  | 107d | start no earlier than 2010-05-20 |  |  |  |  |
| 259 | 13.4 | 4) Provide a solution for the SDK web interface to support query building for ISO 21090 data types. Enhance the QBE translator and integrate with the CQL query translator to support new data types. |  | 1d? | 2010-05-20 | 2010-05-20 |  | 107d | start no earlier than 2010-05-20 |  |  |  |  |
| 260 | 13.5 | 5) Provide an easy user interface for users to navigate the domain model browser. From the domain model browser, users should be able to query the system using the query builder. |  | 1d? | 2010-05-20 | 2010-05-20 |  | 107d | start no earlier than 2010-05-20 |  |  |  |  |
| 261 | 13.6 | 6) Support caGrid and Introduce with regard to CQL changes and data types used by COPPA/PODS |  | 1d? | 2010-05-20 | 2010-05-20 |  | 107d | start no earlier than 2010-05-20 |  |  |  |  |
| 262 | 13.7 | 7) Extension of the ISO 21090 library to support operations on data types |  | 1d? | 2010-05-20 | 2010-05-20 |  | 107d | start no earlier than 2010-05-20 |  |  |  |  |
| 263 | 13.8 | 8) Maintain, enhance, and/or extend the existing tools to support rapid development of services that are compatible with the caBIG infrastructure and allow services to support data sharing securely and efficiently |  | 1d? | 2010-05-20 | 2010-05-20 |  | 107d | start no earlier than 2010-05-20 |  |  |  |  |
| 264 | 13.9 | 9) Evaluate existing tools for their ability to support service development in BIG HEAS, enhance existing tools, and develop new tools to support the emerging business needs |  | 1d? | 2010-05-20 | 2010-05-20 |  | 107d | start no earlier than 2010-05-20 |  |  |  |  |
| 265 | 13.10 | 10) Full life cycle operational and user support of SDK, CSM, and CLM |  | 1d? | 2010-05-20 | 2010-05-20 |  | 107d | start no earlier than 2010-05-20 |  |  |  |  |
| 266 | 13.11 | 11) Enhance caGrid’s Metadata Model Service (MMS) to read the metadata from the target semantic infrastructure... |  | 1d? | 2010-05-20 | 2010-05-20 |  | 107d | start no earlier than 2010-05-20 |  |  |  |  |
| 267 | 13.12 | 12) Enhance Data Service infrastructure to support new MMS |  | 1d? | 2010-05-20 | 2010-05-20 |  | 107d | start no earlier than 2010-05-20 |  |  |  |  |
| 268 | 13.13 | 13) Enhanced instance-level and attribute-level security and enhanced security in the runtime system |  | 1d? | 2010-05-20 | 2010-05-20 |  | 107d | start no earlier than 2010-05-20 |  |  |  |  |
| 269 | 13.14 | 14) Develop or enhance the writable API functions to support persistence through the ISO 21090 data types |  | 1d? | 2010-05-20 | 2010-05-20 |  | 107d |  |  |  |  |  |
